Schedule from MS Project, 2017-02-20 to 2018-04-20.

## Calendars

- Estándar: Mon-Fri 09:00-13:00, 15:00-19:00; Sat-Sun off. Exceptions (off unless hours are given): 2017-02-28 (Día de Andalucía), 2017-04-13 (Jueves Santo), 2017-04-14 (Viernes Santo), 2017-05-01 (Fiesta del trabajo), 2017-08-15 (Asunción de la Virgen), 2017-09-08 (Virgen de la Victoria), 2017-10-12 (Fiesta nacional de España), 2017-11-01 (Día de todos Los Santos), 2017-12-06 (Día de la Constitución Española), 2017-12-08 (La Inmaculada Concepción), 2017-12-25 (Natividad del Señor), 2018-01-01 (Año nuevo), 2018-02-28 (Día de Andalucía), 2018-03-29 (Jueves Santo), 2018-03-30 (Viernes Santo).

## Resources

| Resource | Rate |
| --- | --- |
| DIRECTOR PROYECTO | 60 |
| INGENIERO AGRONOMO | 48 |
| EXPERTO GIS | 47 |
| ECONOMISTA | 45 |
| SOCIOLOGO | 45 |
| INGENIERO EN MEDIOAMBIENTE | 45 |
| ADMINISTRATIVO | 30 |
| TECNICOS DE APOYO | 35 |

## Schedule

| ID | WBS | Task | Type | Duration | Start | Finish | Predecessors | Total slack |
| --- | --- | --- | --- | --- | --- | --- | --- | --- |
| 1 | 1 | **TOTAL PROYECTO** |  | 290d | 2017-02-20 | 2018-04-20 |  |  |
| 2 | 1.1 | **FASE 1: PREPARACIÓN PARA LA FORMULACIÓN** |  | 33d | 2017-02-20 | 2017-04-06 |  | 0d |
| 3 | 1.1.1 | INICIO | milestone, manual | 0d | 2017-02-20 | 2017-02-20 |  |  |
| 4 | 1.1.2 | TERMINOS DE REFERENCIA. Objetivos. Condicionantes del Promotor | manual | 10d | 2017-02-21 | 2017-03-07 | 3 |  |
| 5 | 1.1.3 | FINANCIACION | manual | 7d | 2017-02-21 | 2017-03-02 | 3 |  |
| 6 | 1.1.4 | COMITÉ DE COORDINACION. Constitución y organización | manual | 5d | 2017-02-21 | 2017-02-27 | 3 |  |
| 7 | 1.1.5 | EQUIPO DE FORMULACION. Recursos humanos y técnicos | manual | 15d | 2017-03-01 | 2017-03-21 | 4SS, 6 |  |
| 8 | 1.1.6 | METODOLOGIA Y PLAN DE TRABAJO | manual | 10d | 2017-03-15 | 2017-03-28 | 7FS-5d, 5, 4, 6SS |  |
| 9 | 1.1.7 | DOC. Nº1: Fin P.F | manual | 5d | 2017-03-29 | 2017-04-04 | 8 |  |
| 10 | 1.1.8 | Entrega al PROMOTOR. Doc. nº1 | milestone, manual | 0d | 2017-04-05 | 2017-04-05 | 9 |  |
| 11 | 1.1.9 | SEMINARIO DE LANZAMIENTO DEL PROYECTO | manual | 1d | 2017-04-06 | 2017-04-06 | 10 |  |
| 12 | 1.2 | **FASE 2: ANALISIS Y DIAGNOSTICO** |  | 133d? | 2017-02-20 | 2017-08-31 |  | 0d |
| 13 | 1.2.1 | **ANALISIS ANTECEDENTES** |  | 15d | 2017-02-20 | 2017-03-13 | 11 |  |
| 14 | 1.2.1.1 | POLITICAS Y PROGRAMAS | manual | 10d | 2017-04-07 | 2017-04-24 | 11 |  |
| 15 | 1.2.1.2 | MARCO LEGAL | manual | 15d | 2017-04-07 | 2017-05-02 | 11 |  |
| 16 | 1.2.1.3 | BASES DE DATOS EXISTENTES | manual | 7d | 2017-04-07 | 2017-04-19 | 11 |  |
| 17 | 1.2.2 | **ANALISIS DEL AREA DEL PROYECTO** |  | 80d | 2017-04-19 | 2017-08-10 | 11, 16 | 0d |
| 18 | 1.2.2.1 | ANALISIS DE RECURSOS NATURALES. INVENTARIO AMBIENTAL | manual | 35d | 2017-04-19 | 2017-06-08 |  |  |
| 19 | 1.2.2.2 | INFRAESTRUCTURAS Y SERVICIOS | manual | 20d | 2017-06-09 | 2017-07-06 | 18 |  |
| 20 | 1.2.2.3 | ANALISIS DE SECTORES PRODUCTIVOS | manual | 25d | 2017-07-07 | 2017-08-10 | 14, 13, 15, 19 |  |
| 21 | 1.2.2.4 | ANALISIS POBLACIONAL | manual | 20d | 2017-04-19 | 2017-05-18 |  |  |
| 22 | 1.2.2.5 | SISTEMA GENERAL TERRITORIAL DE INFORMACION | manual | 21d | 2017-04-20 | 2017-05-19 | 16 |  |
| 23 | 1.2.3 | **ANALISIS DE AGENTES Y PARTICIPACION** |  | 82d | 2017-05-05 | 2017-08-29 |  | 0d |
| 24 | 1.2.3.1 | IDENTIFICACIÓN DE AGENTES Y TIPOLOGIA | manual | 10d | 2017-05-05 | 2017-05-18 | 22SS+10d |  |
| 25 | 1.2.3.2 | ANALISIS DE LA PARTICIPACIÓN: ENCUESTA CON LOS AGENTES | manual | 60d | 2017-05-19 | 2017-08-10 | 24 |  |
| 26 | 1.2.3.3 | TALLER DE PARTICIPACIÓN AGENTES PUBLICOS | manual | 1d | 2017-06-02 | 2017-06-02 | 25SS+10d |  |
| 27 | 1.2.3.4 | ANALISIS PROSPECTIVO SIN | manual | 6d | 2017-06-05 | 2017-06-12 | 26 |  |
| 28 | 1.2.3.5 | INFORME DE PARTICIPACION: Problemas, necesidades, oportunidades | manual | 10d | 2017-08-11 | 2017-08-25 | 27, 25 |  |
| 29 | 1.2.3.6 | PRESENTACIÓN Y VALIDACION DE CONCLUSIONES | manual | 2d | 2017-08-28 | 2017-08-29 | 28 |  |
| 30 | 1.2.4 | CONCLUSIONES Y Doc. Nº2. Presentación al PROMOTOR | milestone, manual | 0d | 2017-08-30 | 2017-08-30 | 29 |  |
| 31 | 1.2.5 | Doc. nº2. REVISIÓN POR EL PROMOTOR | milestone, manual | 0d | 2017-08-31 | 2017-08-31 | 29, 30 |  |

| ID | WBS | Task | Type | Duration | Start | Finish | Predecessors | Total slack | Free slack |
| --- | --- | --- | --- | --- | --- | --- | --- | --- | --- |
| 32 | 1.3 | **FASE 3: DISEÑO DEL PROYECTO** |  | 94d | 2017-08-31 | 2018-01-18 |  | 0d |  |
| 33 | 1.3.1 | OBJETIVOS Y METAS |  | 1d | 2017-08-31 | 2017-08-31 | 31 | 40d | 1d |
| 34 | 1.3.2 | ALTERNATIVA ESTRATEGICAS: ANÁLISIS Y SELECCIÓN | manual | 7d | 2017-09-04 | 2017-09-13 | 33 |  |  |
| 35 | 1.3.3 | FORMULACION DE LOS COMPONENTES | manual | 60d | 2017-09-14 | 2017-12-12 | 34 |  |  |
| 36 | 1.3.4 | DISEÑO DE LA ORGANIZACIÓN | manual | 10d | 2017-12-13 | 2017-12-27 | 35 |  |  |
| 37 | 1.3.5 | SISTEMA DE SEGUIMIENTO Y EVALUACION. Programación de la ejecución | manual | 7d | 2017-12-28 | 2018-01-08 | 36, 35 |  |  |
| 38 | 1.3.6 | PRESUPUESTACION | manual | 4d | 2017-12-28 | 2018-01-03 | 35, 36 |  |  |
| 39 | 1.3.7 | Doc. Nº 3. Entrega al PROMOTOR | milestone, manual | 0d | 2018-01-04 | 2018-01-04 | 38 |  |  |
| 40 | 1.3.8 | Doc. Nº 3. REVISION POR EL PROMOTOR | manual | 10d | 2018-01-05 | 2018-01-18 | 39 |  |  |
| 41 | 1.4 | **FASE 4: EVALUACION MULTICRITERIO** |  | 10d | 2018-01-19 | 2018-02-01 |  | 0d |  |
| 42 | 1.4.1 | EVALUACION ECONOMICO-FINANCIERA | manual | 10d | 2018-01-19 | 2018-02-01 | 40 |  |  |
| 43 | 1.4.2 | EVALUACION SOCIAL Y CULTURAL | manual | 10d | 2018-01-19 | 2018-02-01 | 40 |  |  |
| 44 | 1.4.3 | EVALUACION AMBIENTAL | manual | 10d | 2018-01-19 | 2018-02-01 | 40 |  |  |
| 45 | 1.4.4 | EVALUACION DE RIESGOS, SEGURIDAD Y SALUD DEL PROYECTO | manual | 10d | 2018-01-19 | 2018-02-01 | 40 |  |  |
| 46 | 1.4.5 | Entrega Doc. nº 4. VIABILIDAD Y SOSTENIBLIDAD | milestone, manual | 0d | 2018-01-22 | 2018-01-22 | 45 |  |  |
| 47 | 1.4.6 | Revisión Doc. Nº 4 | manual | 5d | 2018-01-22 | 2018-01-26 | 42, 43, 44 |  |  |
| 48 | 1.5 | **FASE 5: DOCUMENTACION** |  | 10d | 2018-01-23 | 2018-02-05 |  | 0d |  |
| 49 | 1.5.1 | MEMORIA | manual | 6d | 2018-01-23 | 2018-01-30 | 47 |  |  |
| 50 | 1.5.2 | ANEJOS A LA MEMORIA | manual | 10d | 2018-01-23 | 2018-02-05 | 47 |  |  |
| 51 | 1.5.3 | PLANOS | manual | 10d | 2018-01-23 | 2018-02-05 | 47 |  |  |
| 52 | 1.5.4 | PLIEGO DE CONDICIONES | manual | 3d | 2018-01-23 | 2018-01-25 | 47 |  |  |
| 53 | 1.5.5 | PRESUPUESTO | manual | 3d | 2018-01-23 | 2018-01-25 | 47 |  |  |
| 54 | 1.5.6 | ESTUDIO DE SEGURIDAD Y SALUD | manual | 10d | 2018-01-23 | 2018-02-05 | 47 |  |  |
| 55 | 1.5.7 | Entrega del proyecto | milestone, manual | 0d | 2018-01-24 | 2018-01-24 | 54, 49, 50, 51, 52, 53 |  |  |
